# Srijesh_project_plan_1

Schedule from MS Project, 2022-11-14 to 2024-10-23, status date 2024-02-08, costs in $, A marks actual dates.

## Calendars

- Standard: Mon-Fri 08:00-12:00, 13:00-17:00; Sat-Sun off.

## Resources

| Resource | Rate |
| --- | --- |
| Analyst 1 | 100 |
| Analyst 2 | 100 |
| Analyst 3 | 100 |
| Manager 1 | 150 |
| Manager 2 | 150 |
| Contractor 1 | 200 |
| Contractor 2 | 200 |
| Contractor 3 | 200 |
| Laptop | 1500 |
| Cellphone | 1000 |
| Servers and data centre equipment | 50000 |
| Licenced Software | 10000 |
| Travel cost | 10000 |
| management reserve | 60 |
| analytical view | 450000 |
| innova engineer | 75 |
| new training development package | 30000 |
| license export | 50000 |

## Schedule

| ID | WBS | Task | Duration | Start | Finish | Predecessors | Complete | Remaining | Baseline start | Baseline finish | Baseline duration | Total slack | Resources | Work | Actual work | Cost | Baseline cost | Actual cost |
| --- | --- | --- | --- | --- | --- | --- | --- | --- | --- | --- | --- | --- | --- | --- | --- | --- | --- | --- |
| 1 | 1 | **Project Schedule Plan** | 508d | 2022-11-14 A | 2024-10-23 |  | 70% | 152.46d | 2022-11-14 | 2024-09-02 | 471d | 0d | Licenced Software [700%]; Travel cost [700%] | 12808h | 8364h | 2,653,080 | 2,692,200 | 1,365,574.48 |
| 2 | 1.1 | management reserve | 446d | 2022-11-14 A | 2024-07-29 A |  | 100% |  |  |  |  |  | management reserve | 3568h | 3568h | 214,080 |  | 214,080 |
| 3 | 1.2 | **scope** | 70d | 2022-11-14 A | 2023-02-17 A |  | 100% |  | 2022-11-14 | 2023-02-17 | 70d |  |  | 1112h | 1112h | 152,500 | 152,500 | 152,500 |
| 4 | 1.2.1 | planning scope | 14d | 2022-11-14 A | 2022-12-01 A |  | 100% |  | 2022-11-14 | 2022-12-01 | 14d |  | Analyst 1; Manager 1; Cellphone [500%]; Laptop [500%]; Analyst 2; Analyst 3 | 224h | 224h | 40,500 | 40,500 | 40,500 |
| 5 | 1.2.2 | collecting requirements | 20d | 2022-12-02 A | 2022-12-29 A | 4 | 100% |  | 2022-12-02 | 2022-12-29 | 20d |  | Analyst 2; Analyst 3; Manager 2; Analyst 1 | 480h | 480h | 56,000 | 56,000 | 56,000 |
| 6 | 1.2.3 | creating the work breakdown structure | 20d | 2022-12-30 A | 2023-01-26 A | 5 | 100% |  | 2022-12-30 | 2023-01-26 | 20d |  | Manager 1; Analyst 1; Analyst 2; Manager 2 | 280h | 280h | 38,000 | 38,000 | 38,000 |
| 7 | 1.2.4 | validating scope | 6d | 2023-01-27 A | 2023-02-03 A | 6 | 100% |  | 2023-01-27 | 2023-02-03 | 6d |  | Analyst 1 [50%]; Manager 1 [50%] | 48h | 48h | 6,000 | 6,000 | 6,000 |
| 8 | 1.2.5 | controlling scope | 10d | 2023-02-06 A | 2023-02-17 A | 7 | 100% |  | 2023-02-06 | 2023-02-17 | 10d |  | Manager 2 [50%]; Manager 1 [50%] | 80h | 80h | 12,000 | 12,000 | 12,000 |
| 9 | 1.3 | **Data collection and verification** | 36d | 2023-02-20 A | 2023-04-10 A | 3 | 100% |  | 2023-02-20 | 2023-05-15 | 61d |  |  | 528h | 528h | 168,700 | 198,700 | 168,700 |
| 10 | 1.3.1 | Analysis on target markets | 10d | 2023-02-20 A | 2023-03-03 A |  | 100% |  | 2023-02-20 | 2023-03-31 | 30d |  | Analyst 1 | 80h | 80h | 8,000 | 24,000 | 8,000 |
| 11 | 1.3.2 | meetings with stakeholders | 5d | 2023-03-06 A | 2023-03-10 A | 10 | 100% |  | 2023-04-03 | 2023-04-14 | 10d |  | Analyst 1; Analyst 2; Manager 1 | 120h | 120h | 14,000 | 28,000 | 14,000 |
| 12 | 1.3.3 | Documenting current system | 10d | 2023-03-13 A | 2023-03-24 A | 11 | 100% |  | 2023-04-17 | 2023-04-28 | 10d |  | Analyst 1; Contractor 1 | 160h | 160h | 24,000 | 24,000 | 24,000 |
| 13 | 1.3.4 | Updating the current system through analysis performed | 10d | 2023-03-27 A | 2023-04-07 A | 12 | 100% |  | 2023-05-01 | 2023-05-12 | 10d |  | Analyst 2; Contractor 2 | 160h | 160h | 24,000 | 24,000 | 24,000 |
| 14 | 1.3.5 | analysis finished | 1d | 2023-04-10 A | 2023-04-10 A | 13 | 100% |  | 2023-05-15 | 2023-05-15 | 1d |  | Manager 1; Cellphone [300%]; Laptop [300%]; Travel cost [900%] | 8h | 8h | 98,700 | 98,700 | 98,700 |
| 15 | 1.4 | **Model Design** | 43d | 2023-04-11 A | 2023-06-08 A | 9 | 100% |  | 2023-05-16 | 2023-08-01 | 56d |  |  | 632h | 632h | 112,000 | 352,400 | 112,000 |
| 16 | 1.4.1 | Design database | 10d | 2023-04-11 A | 2023-04-24 A |  | 100% |  | 2023-05-16 | 2023-06-12 | 20d |  | Manager 1 [30%]; Contractor 1 [70%] | 80h | 80h | 14,800 | 99,600 | 14,800 |
| 17 | 1.4.2 | Software design | 30d | 2023-04-11 A | 2023-05-22 A | 9 | 100% |  | 2023-05-16 | 2023-06-26 | 30d |  | Contractor 2 [80%]; Manager 2 [20%] | 240h | 240h | 45,600 | 55,600 | 45,600 |
| 18 | 1.4.3 | interface design | 7d | 2023-04-11 A | 2023-04-19 A | 9 | 100% |  | 2023-05-16 | 2023-06-12 | 20d |  | Contractor 3; Analyst 1 | 112h | 112h | 16,800 | 58,000 | 16,800 |
| 19 | 1.4.4 | Create design specifications document | 5d | 2023-05-23 A | 2023-05-29 A | 17 | 100% |  | 2023-06-27 | 2023-07-10 | 10d |  | Contractor 1; Manager 1 | 80h | 80h | 14,000 | 38,000 | 14,000 |
| 20 | 1.4.5 | assessment of functional specifications | 7d | 2023-05-30 A | 2023-06-07 A | 19 | 100% |  | 2023-07-11 | 2023-07-31 | 15d |  | Contractor 1; Manager 2 | 112h | 112h | 19,600 | 100,000 | 19,600 |
| 21 | 1.4.6 | Design finished | 1d | 2023-06-08 A | 2023-06-08 A | 20 | 100% |  | 2023-08-01 | 2023-08-01 | 1d |  | Manager 2 | 8h | 8h | 1,200 | 1,200 | 1,200 |
| 22 | 1.5 | **Model Development** | 128d | 2023-06-09 A | 2023-12-05 A | 15 | 100% |  | 2023-08-02 | 2024-01-26 | 128d |  |  | 1784h | 1784h | 320,000 | 585,200 | 320,000 |
| 23 | 1.5.1 | Develop Suitable business model | 14d | 2023-06-09 A | 2023-06-28 A |  | 100% |  | 2023-08-02 | 2023-08-21 | 14d |  | Analyst 1 | 112h | 112h | 11,200 | 22,400 | 11,200 |
| 24 | 1.5.2 | System module development phase 1 | 35d | 2023-06-29 A | 2023-08-16 A | 23 | 100% |  | 2023-08-22 | 2023-10-09 | 35d |  | Contractor 1 | 280h | 280h | 56,000 | 198,000 | 56,000 |
| 25 | 1.5.3 | system module development phase 2 | 35d | 2023-08-17 A | 2023-10-04 A | 24 | 100% |  | 2023-10-10 | 2023-11-27 | 35d |  | Contractor 1; Contractor 2 | 560h | 560h | 112,000 | 198,000 | 112,000 |
| 26 | 1.5.4 | integration of system modules | 30d | 2023-10-05 A | 2023-11-15 A | 25 | 100% |  | 2023-11-28 | 2024-01-08 | 30d |  | Contractor 2; Contractor 3; Analyst 1 | 720h | 720h | 120,000 | 146,000 | 120,000 |
| 27 | 1.5.5 | perform initial testing | 10d | 2023-11-16 A | 2023-11-29 A | 26 | 100% |  | 2024-01-09 | 2024-01-22 | 10d |  | Contractor 2 | 80h | 80h | 16,000 | 16,000 | 16,000 |
| 28 | 1.5.6 | development finished | 4d | 2023-11-30 A | 2023-12-05 A | 27 | 100% |  | 2024-01-23 | 2024-01-26 | 4d |  | Manager 1 | 32h | 32h | 4,800 | 4,800 | 4,800 |

| ID | WBS | Task | Duration | Start | Finish | Predecessors | Complete | Remaining | Baseline start | Baseline finish | Baseline duration | Total slack | Resources | Work | Actual work | Cost | Baseline cost | Actual cost |
| --- | --- | --- | --- | --- | --- | --- | --- | --- | --- | --- | --- | --- | --- | --- | --- | --- | --- | --- |
| 29 | 1.6 | **testing** | 35d | 2023-12-06 A | 2024-01-23 A | 22 | 100% |  | 2024-01-29 | 2024-03-15 | 35d |  |  | 560h | 560h | 96,200 | 242,200 | 96,200 |
| 30 | 1.6.1 | performing the system test | 14d | 2023-12-06 A | 2023-12-25 A |  | 100% |  | 2024-01-29 | 2024-02-15 | 14d |  | Contractor 1; Contractor 3 | 224h | 224h | 44,800 | 44,800 | 44,800 |
| 31 | 1.6.2 | issues found and understanding the issues and correcting | 20d | 2023-12-26 A | 2024-01-22 A | 30 | 100% |  | 2024-02-16 | 2024-03-14 | 20d |  | Contractor 3; Analyst 2; Cellphone | 320h | 320h | 49,000 | 195,000 | 49,000 |
| 32 | 1.6.3 | testing finished | 1d | 2024-01-23 A | 2024-01-23 A | 31 | 100% |  | 2024-03-15 | 2024-03-15 | 1d |  | Manager 1; Manager 2 | 16h | 16h | 2,400 | 2,400 | 2,400 |
| 33 | 1.7 | **Data centre build out** | 294d | 2023-02-20 A | 2024-04-04 | 3 | 48% | 151.5d | 2023-02-20 | 2024-04-04 | 294d | 144d |  |  |  | 300,000 | 325,000 | 262,500 |
| 34 | 1.7.1 | planning the data centre buildout | 30d | 2023-02-20 A | 2023-03-31 A |  | 100% |  | 2023-02-20 | 2023-03-31 | 30d |  | Servers and data centre equipment |  |  | 50,000 | 50,000 | 50,000 |
| 35 | 1.7.2 | Design the data centre buildout | 20d | 2023-04-03 A | 2023-04-28 A | 34 | 100% |  | 2023-04-03 | 2023-04-28 | 20d |  | Servers and data centre equipment |  |  | 50,000 | 50,000 | 50,000 |
| 36 | 1.7.3 | planning resources for datacentre buildout | 14d | 2023-05-01 A | 2023-05-18 A | 35 | 100% |  | 2023-05-01 | 2023-05-18 | 14d |  | Servers and data centre equipment |  |  | 50,000 | 50,000 | 50,000 |
| 37 | 1.7.4 | procurement of resources for data centre buildout | 30d | 2023-05-19 A | 2023-06-29 A | 36 | 100% |  | 2023-05-19 | 2023-06-29 | 30d |  | Servers and data centre equipment [200%] |  |  | 100,000 | 125,000 | 100,000 |
| 38 | 1.7.5 | building a datacentre | 200d | 2023-06-30 A | 2024-04-04 | 37 | 24% | 151.5d | 2023-06-30 | 2024-04-04 | 200d | 144d | Servers and data centre equipment |  |  | 50,000 | 50,000 | 12,500 |
| 39 | 1.8 | **analytical development** | 75d | 2024-01-24 A | 2024-05-07 | 32 | 15% | 63.75d |  |  |  | 0d | license export | 1200h | 180h | 635,000 |  | 39,000 |
| 40 | 1.8.1 | Analytical view review | 10d | 2024-01-24 A | 2024-02-06 A |  | 100% |  |  |  |  |  | innova engineer; Manager 2 | 160h | 160h | 18,000 |  | 18,000 |
| 41 | 1.8.2 | creating analytical view | 50d | 2024-02-07 A | 2024-04-16 | 40 | 3% | 48.75d |  |  |  | 0d | analytical view; innova engineer; Manager 2 | 800h | 20h | 540,000 |  | 13,500 |
| 42 | 1.8.3 | retesting | 15d | 2024-04-17 | 2024-05-07 | 41 |  |  |  |  |  | 0d | innova engineer; Manager 2 | 240h |  | 27,000 |  |  |
| 43 | 1.9 | **Training and documentation** | 38d | 2024-05-08 | 2024-06-28 | 42 |  |  | 2024-03-18 | 2024-05-08 | 38d | 0d | innova engineer | 1136h |  | 213,600 | 224,200 |  |
| 44 | 1.9.1 | developing the instruction manual for the users | 14d | 2024-05-08 | 2024-05-27 |  |  |  | 2024-03-18 | 2024-04-04 | 14d | 24d | Contractor 1; Manager 1 | 224h |  | 39,200 | 39,200 |  |
| 45 | 1.9.2 | develop training modules | 14d | 2024-05-08 | 2024-05-27 | 42 |  |  | 2024-03-18 | 2024-04-04 | 14d | 24d | Contractor 2 | 112h |  | 22,400 | 22,400 |  |
| 46 | 1.9.3 | develop user guide | 14d | 2024-05-08 | 2024-05-27 | 42 |  |  | 2024-03-18 | 2024-04-04 | 14d | 0d | Contractor 3 | 112h |  | 22,400 | 22,400 |  |
| 47 | 1.9.4 | new training development package | 24d | 2024-05-28 | 2024-06-28 | 46 |  |  |  |  |  | 0d | new training development package |  |  | 30,000 |  |  |
| 48 | 1.9.5 | training and documentation finished | 24d | 2024-05-28 | 2024-06-28 | 46 |  |  | 2024-04-05 | 2024-05-08 | 24d | 0d | Contractor 1; Contractor 2 | 384h |  | 76,800 | 140,200 |  |
| 49 | 1.10 | **rollout** | 29d | 2024-07-01 | 2024-08-08 | 43 |  |  | 2024-05-09 | 2024-06-18 | 29d | 0d | innova engineer | 912h |  | 130,600 | 113,200 |  |
| 50 | 1.10.1 | developing methodology for deployment | 14d | 2024-07-01 | 2024-07-18 |  |  |  | 2024-05-09 | 2024-05-28 | 14d | 0d | Contractor 1; Manager 1 | 224h |  | 39,200 | 39,200 |  |
| 51 | 1.10.2 | deploy the product | 14d | 2024-07-19 | 2024-08-07 | 50 |  |  | 2024-05-29 | 2024-06-17 | 14d | 0d | Contractor 2; Manager 2; Analyst 2; Contractor 1 | 448h |  | 72,800 | 72,800 |  |
| 52 | 1.10.3 | deployement complete | 1d | 2024-08-08 | 2024-08-08 | 51 |  |  | 2024-06-18 | 2024-06-18 | 1d | 0d | Manager 2 | 8h |  | 1,200 | 1,200 |  |

| ID | WBS | Task | Duration | Start | Finish | Predecessors | Baseline start | Baseline finish | Baseline duration | Total slack | Resources | Work | Cost | Baseline cost |
| --- | --- | --- | --- | --- | --- | --- | --- | --- | --- | --- | --- | --- | --- | --- |
| 53 | 1.11 | **post- mortem** | 54d | 2024-08-09 | 2024-10-23 | 49 | 2024-06-19 | 2024-09-02 | 54d | 0d | innova engineer | 1376h | 170,400 | 238,800 |
| 54 | 1.11.1 | collection of statistics | 10d | 2024-08-09 | 2024-08-22 |  | 2024-06-19 | 2024-07-02 | 10d | 44d | Analyst 1; Contractor 2 | 160h | 24,000 | 24,000 |
| 55 | 1.11.2 | finding the number of new leads | 10d | 2024-08-09 | 2024-08-22 | 49 | 2024-06-19 | 2024-07-02 | 10d | 0d | Contractor 1 | 80h | 16,000 | 16,000 |
| 56 | 1.11.3 | setting up meetings | 16d | 2024-08-23 | 2024-09-13 | 55 | 2024-07-03 | 2024-07-24 | 16d | 0d | Manager 1; Analyst 1 | 256h | 32,000 | 76,800 |
| 57 | 1.11.4 | reviewing the process | 14d | 2024-09-16 | 2024-10-03 | 56 | 2024-07-25 | 2024-08-13 | 14d | 0d | Manager 1; Travel cost; Analyst 1 | 224h | 38,000 | 77,200 |
| 58 | 1.11.5 | write recommendation reports | 14d | 2024-10-04 | 2024-10-23 | 57 | 2024-08-14 | 2024-09-02 | 14d | 0d | Manager 1; Analyst 1 | 224h | 28,000 | 44,800 |
